# 201709_SampleCMS預估與記錄_Lozen

Schedule from ProjectLibre, 2017-09-12 to 2018-02-07.

## Calendars

- Standard: Mon-Fri 08:00-12:00, 13:00-17:00; Sat-Sun off. Exceptions (off unless hours are given): 2017-09-30 08:00-12:00, 13:00-17:00, 2017-10-07 08:00-12:00, 13:00-17:00, 2017-10-09 to 2017-10-10, 2017-10-14 08:00-12:00, 13:00-17:00, 2017-11-04 08:00-12:00, 13:00-17:00, 2017-11-11 08:00-12:00, 13:00-17:00, 2017-11-25 08:00-12:00, 13:00-17:00, 2017-12-02 08:00-12:00, 13:00-17:00, 2017-12-16 08:00-12:00, 13:00-17:00, 2017-12-23 08:00-12:00, 13:00-17:00, 2018-01-01, 2018-01-13 08:00-12:00, 13:00-17:00, 2018-01-20 08:00-12:00, 13:00-17:00, 2018-01-27 08:00-12:00, 13:00-17:00, 2018-02-03 08:00-12:00, 13:00-17:00.

## Resources

| Resource |
| --- |
| Unassigned |
| 大鵬灣 |
| 客委會 |
| 茂林 |
| 科展 |
| 評議中心 |
| 天利 |
| 西語版 |
| 醫療網 |
| 其他 |
| SC |

## Schedule

| ID | WBS | Task | Duration | Start | Finish | Predecessors | Total slack | Constraint | Resources |
| --- | --- | --- | --- | --- | --- | --- | --- | --- | --- |
| 1 | 1 | 準備GitHub相關工具 | 0.5d? | 2017-09-12 08:00 | 2017-09-12 13:00 |  | 11450d |  | SC |
| 2 | 2 | **系統架構設計** | 13.5d? | 2017-09-12 12:00 | 2017-09-29 17:00 |  | 10250d |  |  |
| 3 | 2.1 | 資料層建立-1 | 1.5d? | 2017-09-12 12:00 | 2017-09-13 17:00 | 1 | 11450d |  | SC |
| 4 | 2.2 | 資料層建立-2 | 2.5d? | 2017-09-25 08:00 | 2017-09-27 13:00 |  | 6000d | start no earlier than 2017-09-25 08:00 | SC |
| 5 | 2.3 | 邏輯層建立 | 1.5d? | 2017-09-27 12:00 | 2017-09-28 17:00 | 4 | 6000d |  | SC |
| 6 | 2.4 | 工具函式建立 | 1d? | 2017-09-29 08:00 | 2017-09-29 17:00 | 5 | 6000d |  | SC |
| 7 | 3 | **後台網頁切版製作** | 19d? | 2017-09-30 08:00 | 2017-10-25 17:00 |  | 6000d |  |  |
| 8 | 3.1 | Bootstrap3,4 學習與評估 | 9d? | 2017-09-30 08:00 | 2017-10-12 17:00 | 6 | 6000d |  | SC |
| 9 | 3.2 | 切版製作-登入頁 | 1.5d? | 2017-10-13 08:00 | 2017-10-14 13:00 | 8 | 6000d |  | SC |
| 10 | 3.3 | 切版製作-後台首頁 | 1.5d? | 2017-10-14 12:00 | 2017-10-16 17:00 | 9 | 6000d |  | SC |
| 11 | 3.4 | 切版製作-清單頁 | 3d? | 2017-10-17 08:00 | 2017-10-19 17:00 | 10 | 6000d |  | SC |
| 12 | 3.5 | Bootstrap 4 beta.2 了解與套用 | 1d? | 2017-10-20 08:00 | 2017-10-20 17:00 | 11 | 6000d |  | SC |
| 13 | 3.6 | 切版製作-設定頁-表單 | 1.5d? | 2017-10-23 08:00 | 2017-10-24 13:00 | 12 | 6000d |  | SC |
| 14 | 3.7 | 切版製作-設定頁-清單 | 0.5d? | 2017-10-24 12:00 | 2017-10-24 17:00 | 13 | 6000d |  | SC |
| 15 | 3.8 | 切版製作-清單頁, 用 dialog 內嵌設定頁 | 1d? | 2017-10-25 08:00 | 2017-10-25 17:00 | 14 | 6000d |  | SC |
| 16 | 4 | **帳號與權限系統** | 26d? | 2017-10-26 08:00 | 2017-11-27 17:00 |  | 5150d |  |  |
| 17 | 4.1 | 登入頁(含多語系) | 2.5d? | 2017-10-26 08:00 | 2017-10-30 13:00 | 15 | 6000d |  | SC |
| 18 | 4.2 | 後台首頁 | 2.5d? | 2017-10-30 12:00 | 2017-11-01 17:00 | 17 | 6000d |  | SC |
| 19 | 4.3 | 帳號管理 | 7d? | 2017-11-02 08:00 | 2017-11-09 17:00 | 18 | 6000d |  | SC |
| 20 | 4.4 | 身分權限管理 | 5d? | 2017-11-10 08:00 | 2017-11-15 17:00 | 19 | 6000d |  | SC |
| 21 | 4.5 | 部門管理-1 | 0.5d? | 2017-11-16 08:00 | 2017-11-16 13:00 | 20 | 6000d |  | SC |
| 22 | 4.6 | 部門管理-2 | 0.5d? | 2017-11-17 08:00 | 2017-11-17 13:00 |  | 5900d | start no earlier than 2017-11-17 08:00 | SC |
| 23 | 4.7 | 後台操作記錄 | 1d? | 2017-11-20 08:00 | 2017-11-20 17:00 |  | 5150d | start no earlier than 2017-11-20 08:00 | SC |
| 24 | 4.8 | 後台作業項目管理 | 2d? | 2017-11-21 08:00 | 2017-11-22 17:00 | 23 | 5150d |  | SC |
| 25 | 4.9 | 圖示挑選功能(angular-filemanager) | 4d? | 2017-11-23 08:00 | 2017-11-27 17:00 | 24 | 5150d |  | SC |

Notes:
- 21: 11/16, 安裝 Windows 10 1709

| ID | WBS | Task | Duration | Start | Finish | Predecessors | Total slack | Constraint | Resources |
| --- | --- | --- | --- | --- | --- | --- | --- | --- | --- |
| 26 | 5 | **上稿系統** | 13d? | 2017-11-28 08:00 | 2017-12-13 17:00 |  | 4300d |  |  |
| 27 | 5.1 | 了解 GUID 當 PK 的優缺點和問題解法 | 1d? | 2017-11-28 08:00 | 2017-11-28 17:00 | 16 | 5150d |  | SC |
| 28 | 5.2 | 設定頁; Table, SP, 資料層 | 1.5d? | 2017-11-29 08:00 | 2017-11-30 13:00 | 27 | 5150d |  | SC |
| 29 | 5.3 | 客製化權限判斷; 邏輯層 | 0.5d? | 2017-11-30 12:00 | 2017-11-30 17:00 | 28 | 5150d |  | SC |
| 30 | 5.4 | 清單功能 (缺英文版) | 1d? | 2017-12-01 08:00 | 2017-12-01 17:00 | 29 | 5150d |  | SC |
| 31 | 5.5 | 左側選單 | 0.5d? | 2017-12-02 08:00 | 2017-12-02 13:00 | 30 | 5150d |  | SC |
| 32 | 5.6 | ckeditor 要接上 angular-filemanager | 0.5d? | 2017-12-04 08:00 | 2017-12-04 13:00 |  | 4300d | start no earlier than 2017-12-04 08:00 | SC |
| 33 | 5.7 | 清單功能, 英文版 | 0.5d? | 2017-12-04 12:00 | 2017-12-04 17:00 | 32 | 4300d |  | SC |
| 34 | 5.8 | 附件管理 | 3.5d? | 2017-12-05 08:00 | 2017-12-08 13:00 | 33 | 4300d |  | SC |
| 35 | 5.9 | 照片管理 | 2d? | 2017-12-08 12:00 | 2017-12-12 13:00 | 34 | 4300d |  | SC |
| 36 | 5.10 | 影片管理 | 1.5d? | 2017-12-12 12:00 | 2017-12-13 17:00 | 35 | 4300d |  | SC |
| 37 | 6 | **前台網頁切版製作** | 3d? | 2017-12-14 08:00 | 2017-12-16 17:00 |  | 4150d |  |  |
| 38 | 6.1 | 尋找前台版型 | 1d? | 2017-12-14 08:00 | 2017-12-14 17:00 | 26 | 4300d |  | SC |
| 39 | 6.2 | 切版製作: 前台-內文頁, 右側選單; | 0.5d? | 2017-12-15 08:00 | 2017-12-15 13:00 | 38 | 4300d |  | SC |
| 40 | 6.3 | 切版製作: 前台-三種清單頁; 搜尋結果頁; 錯誤頁; 網站導覽頁; | 1d? | 2017-12-16 08:00 | 2017-12-16 17:00 |  | 4150d | start no earlier than 2017-12-16 08:00 | SC |
| 41 | 7 | 後台內嵌內容頁面; | 0.5d? | 2017-12-18 08:00 | 2017-12-18 13:00 |  | 4100d | start no earlier than 2017-12-18 08:00 | SC |
| 42 | 8 | 上稿系統: 增加額外設定用的欄位; | 2.5d? | 2017-12-19 08:00 | 2017-12-21 13:00 |  | 2450d | start no earlier than 2017-12-19 08:00 | SC |
| 43 | 9 | **前台套版Bootstrap3** | 18.5d? | 2017-12-21 12:00 | 2018-01-15 17:00 |  | 1950d | start no earlier than 2017-12-19 08:00 |  |
| 44 | 9.1 | 錯誤頁套版; 前台基礎設定; | 0.5d? | 2017-12-21 12:00 | 2017-12-21 17:00 | 42 | 2450d |  | SC |
| 45 | 9.2 | Article, MasterPage 套版 (含附件、照片、影片區) | 8d? | 2017-12-22 08:00 | 2018-01-02 17:00 | 44 | 2450d |  | SC |
| 46 | 9.3 | 預覽功能(需後台驗證) | 1d? | 2018-01-03 08:00 | 2018-01-03 17:00 | 45 | 2450d |  | SC |
| 47 | 9.4 | 網站導覽頁 | 0.5d? | 2018-01-04 08:00 | 2018-01-04 13:00 | 46 | 2450d |  | SC |
| 48 | 9.5 | 縮圖條列清單 | 0.5d? | 2018-01-04 12:00 | 2018-01-04 17:00 | 47 | 2450d |  | SC |
| 49 | 9.6 | 區塊清單 | 1d? | 2018-01-05 08:00 | 2018-01-05 17:00 | 48 | 2450d |  | SC |
| 50 | 9.7 | 搜尋條件區與搜尋結果頁 | 2d? | 2018-01-08 08:00 | 2018-01-09 17:00 | 49 | 2450d |  | SC |
| 51 | 9.8 | 搜尋條件區-下拉提示常用關鍵字 | 0.5d? | 2018-01-13 08:00 | 2018-01-13 13:00 |  | 1950d | start no earlier than 2018-01-13 08:00 | SC |
| 52 | 9.9 | 上稿系統: 設定頁, 挑選版型控制項、客製化網頁程式 | 1.5d? | 2018-01-13 12:00 | 2018-01-15 17:00 | 51 | 1950d |  | SC |
| 53 | 10 | 後台 Bootstrap 4 beta.3 了解與套用 | 0.5d? | 2018-01-02 08:00 | 2018-01-02 13:00 |  | 3000d | start no earlier than 2018-01-02 08:00 | SC |
| 54 | 11 | angular-filemanager 增加顯示所有縮圖 | 0.5d? | 2018-01-05 08:00 | 2018-01-05 13:00 |  | 2700d | start no earlier than 2018-01-05 08:00 | SC |
| 55 | 12 | 參數過濾機制 | 2d? | 2018-01-17 08:00 | 2018-01-18 17:00 |  | 1500d | start no earlier than 2018-01-17 08:00 | SC |
| 56 | 13 | 參數過濾機制效能調整 | 1d? | 2018-01-19 08:00 | 2018-01-19 17:00 | 55 | 1500d |  | SC |
| 57 | 14 | 後台 Bootstrap 4 stable 了解與套用 | 0.5d? | 2018-01-20 08:00 | 2018-01-20 13:00 | 56 | 1500d |  | SC |
| 58 | 15 | 加解密 key 值移到 web.config; 在前後台網站增加版本編號; | 0.5d? | 2018-01-22 08:00 | 2018-01-22 13:00 |  | 1400d | start no earlier than 2018-01-22 08:00 | SC |
| 59 | 16 | 壓力測試與效能調整 | 1d? | 2018-01-23 08:00 | 2018-01-23 17:00 |  | 1050d | start no earlier than 2018-01-23 08:00 | SC |
| 60 | 17 | 後台 Password salt 改到 web.config; | 0.5d? | 2018-01-24 08:00 | 2018-01-24 13:00 | 59 | 1050d |  | SC |
| 61 | 18 | 前台增加語言選單; 單元區連結縮小間距; | 0.5d? | 2018-01-24 08:00 | 2018-01-24 13:00 |  | 1200d | start no earlier than 2018-01-24 08:00 | SC |
| 62 | 19 | 後台-變更密碼頁; | 1d? | 2018-01-24 12:00 | 2018-01-25 13:00 | 60 | 1050d |  | SC |
| 63 | 20 | 後台-要求重置密碼頁; | 0.5d? | 2018-01-25 12:00 | 2018-01-25 17:00 | 62 | 1050d |  | SC |
| 64 | 21 | 後台-上稿系統: 修正清單頁的順序變更鈕、切換鈕、附件、照片、影片設定頁的權限問題; | 0.5d? | 2018-01-26 08:00 | 2018-01-26 13:00 |  | 850d | start no earlier than 2018-01-26 08:00 | SC |
| 65 | 22 | guest 相關功能調整; 整理建置資料庫用的 sql scripts; | 0.5d | 2018-01-26 12:00 | 2018-01-26 17:00 | 64 | 850d |  | SC |
| 66 | 23 | 後台-上稿系統: 加強 ajax 存取時的權限驗證; | 0.5d? | 2018-01-27 08:00 | 2018-01-27 13:00 | 65 | 850d |  | SC |
| 67 | 24 | 身分權限管理: 授權設定頁, 加強 ajax 存取時的權限驗證; | 0.5d? | 2018-01-27 12:00 | 2018-01-27 17:00 | 66 | 850d |  | SC |
| 68 | 25 | 後台-變更密碼頁、要求重置密碼頁: 不允許身分 guest 使用; | 0.5d? | 2018-01-29 08:00 | 2018-01-29 13:00 |  | 300d | start no earlier than 2018-01-29 08:00 | SC |

| ID | WBS | Task | Duration | Start | Finish | Predecessors | Total slack | Constraint | Resources |
| --- | --- | --- | --- | --- | --- | --- | --- | --- | --- |
| 69 | 26 | **網站放上 Azure, 開放 guest 帳號** | 8d? | 2018-01-29 12:00 | 2018-02-07 13:00 |  |  |  |  |
| 70 | 26.1 | 在 Azure 建置 DB 和網站 | 1d? | 2018-01-29 12:00 | 2018-01-30 13:00 | 68 | 300d |  | SC |
| 71 | 26.2 | 拿掉帳號備註欄裡的預設密碼; 所有版本編號加第3節; | 0.5d? | 2018-01-30 12:00 | 2018-01-30 17:00 | 70 | 300d |  | SC |
| 72 | 26.3 | 修正首頁問題; 修正索引 IX_Article_ShowTypeId_LinkUrl 最大索引鍵長度問題; | 0.5d? | 2018-01-30 08:00 | 2018-01-30 13:00 |  | 700d | start no earlier than 2018-01-30 08:00 | SC |
| 73 | 26.4 | 後台-登入頁: 增加 guest account info. | 0.5d? | 2018-01-30 08:00 | 2018-01-30 13:00 |  | 700d | start no earlier than 2018-01-30 08:00 | SC |
| 74 | 26.5 | 修正使用 https 發生的混合內容問題; | 0.5d? | 2018-01-30 08:00 | 2018-01-30 13:00 |  | 700d | start no earlier than 2018-01-30 08:00 | SC |
| 75 | 26.6 | 後台-上稿系統: 修正切換鈕在 post back 之後沒作用的問題; | 0.5d? | 2018-01-30 08:00 | 2018-01-30 13:00 |  | 700d | start no earlier than 2018-01-30 08:00 | SC |
| 76 | 26.7 | 後台-上稿系統: 清單頁, 刪除網頁時一併刪除所有相關的子網頁和附件、照片、影片資料; | 0.5d? | 2018-01-31 08:00 | 2018-01-31 13:00 | 71 | 300d |  | SC |
| 77 | 26.8 | 後端操作記錄: 增加記錄所有新增資料時的新代碼; | 0.5d? | 2018-01-31 12:00 | 2018-01-31 17:00 | 76 | 300d |  | SC |
| 78 | 26.9 | 整理建置資料庫用的 sql scripts: add "sitemap, search-result" into article; | 0.5d? | 2018-02-01 08:00 | 2018-02-01 13:00 | 77 | 300d |  | SC |
| 79 | 26.10 | 前台內容建置; | 0.5d? | 2018-02-01 08:00 | 2018-02-01 13:00 |  | 500d | start no earlier than 2018-02-01 08:00 | SC |
| 80 | 26.11 | 後台-上稿系統: 易用性與問題修正; 公開測試網; | 0.5d? | 2018-02-01 12:00 | 2018-02-01 17:00 | 78 | 300d |  | SC |
| 81 | 26.12 | 確認 Azure 時區問題與解法; 尋找與測試 Azure 上面的 Smtp Server; | 0.5d? | 2018-02-02 08:00 | 2018-02-02 13:00 | 80 | 300d |  | SC |
| 82 | 26.13 | 後台: 易用性與問題修正; | 0.5d? | 2018-02-02 12:00 | 2018-02-02 17:00 | 81 | 300d |  | SC |
| 83 | 26.14 | 給開發者的安裝說明; | 0.5d? | 2018-02-02 08:00 | 2018-02-02 13:00 |  | 400d | start no earlier than 2018-02-02 08:00 | SC |
| 84 | 26.15 | 備份 Azure 資料庫與網站附件; 尋找 Azure 排程執行 sp 的方法; | 0.5d? | 2018-02-03 08:00 | 2018-02-03 13:00 | 82 | 300d |  | SC |
| 85 | 26.16 | 安裝 VS2015, SQL2017; | 0.5d? | 2018-02-05 08:00 | 2018-02-05 13:00 |  | 200d | start no earlier than 2018-02-05 08:00 | SC |
| 86 | 26.17 | 後端操作記錄: 修正 checkbox 位置; | 0.25d? | 2018-02-06 08:00 | 2018-02-06 10:00 |  | 125d | start no earlier than 2018-02-06 08:00 | SC |
| 87 | 26.18 | 排程重建 SearchDataSource: 用 PowerShell 寫 .ps1 放上 WebJob; | 0.5d? | 2018-02-07 08:00 | 2018-02-07 13:00 |  |  | start no earlier than 2018-02-07 08:00 | SC |

Notes:
- 80: 後台-上稿系統: 修正切換鈕的狀態在 post back 之後變回舊值的問題; 後台-上稿系統-設定頁: 新增時, 版面模式延用上層的; 上架日期增加備註; 網址別名, 增加範例連結; 前台網頁: 右側選單, 忽略狀態”隱藏子項目”; 搜尋條件區, 加 title;
- 82: 後台: 所有清單頁, 指定欄位排序時收合搜尋條件區; 後台: 參數過濾, 變更密碼與忘記密碼頁也要完全檢查; 修正沒有套用 AppSettings["SmtpServer"] 的問題;
